Schedule from MS Project, 2021-03-01 to 2021-04-04, 24 hours a day, A marks actual dates.
Microsoft

## Calendars

- 24 小时: Mon-Sun 00:00-24:00. Exceptions (off unless hours are given): 2021-03-03 to 2021-03-11 05:00-22:00 (基础准备阶段).

## Resources

| Resource |
| --- |
| 姜浩 |
| 杨立志 |
| 陆炎 |
| 臧含 |
| 电气人员 |
| 机械人员 |
| 液压人员 |
| 陈田风 |

## Schedule

| ID | WBS | Task | Duration | Start | Finish | Predecessors | Complete | Remaining | Baseline start | Baseline finish | Baseline duration | Total slack | Constraint | Resources | Work | Actual work |
| --- | --- | --- | --- | --- | --- | --- | --- | --- | --- | --- | --- | --- | --- | --- | --- | --- |
| 1 | 1 | **装配** | 2.73d | 2021-03-01 14:00 A | 2021-03-04 19:30 A |  | 100% |  | 2021-03-01 00:00 | 2021-03-06 22:00 | 4.83d |  |  |  | 75h | 75h |
| 2 | 1.1 | 未上轨装配 | 0.98d | 2021-03-01 14:00 A | 2021-03-02 13:30 A |  | 100% |  | 2021-03-01 00:00 | 2021-03-03 00:00 | 2d |  | start no earlier than 2021-03-01 00:00 | 机械人员; 液压人员; 电气人员 | 70.5h | 70.5h |
| 3 | 1.2 | 上轨装配 | 1.5h | 2021-03-04 18:00 A | 2021-03-04 19:30 A | 9 | 100% |  | 2021-03-06 05:00 | 2021-03-06 22:00 | 17h |  |  | 机械人员; 液压人员; 电气人员 | 4.5h | 4.5h |
| 4 | 2 | **功能实现阶段** | 15.81d? | 2021-03-03 08:00 A | 2021-03-21 13:30 |  | 3% | 15.3d? | 2021-03-03 05:00 | 2021-03-23 00:00 | 17.38d? | 0d |  |  | 670.5h | 43.61h |
| 5 | 2.1 | **通信及信号测试** | 1.25d? | 2021-03-03 08:00 A | 2021-03-04 21:00 A | 2 | 100% |  | 2021-03-03 05:00 | 2021-03-03 22:00 | 0.71d? |  |  |  | 7h | 7h |
| 6 | 2.1.1 | 传感器数值校验等 | 2h? | 2021-03-03 08:00 A | 2021-03-03 10:00 A |  | 100% |  | 2021-03-03 05:00 | 2021-03-03 20:00 | 15h? |  |  | 姜浩; 电气人员; 臧含 | 6h | 6h |
| 7 | 2.1.2 | 行走缸/举升缸零点配置 | 0.5h? | 2021-03-04 20:30 A | 2021-03-04 21:00 A | 16 | 100% |  | 2021-03-03 20:00 | 2021-03-03 22:00 | 2h? |  |  | 姜浩; 臧含 | 1h | 1h |
| 8 | 2.2 | 急停和恢复 | 0.5h | 2021-03-03 11:00 A | 2021-03-03 11:30 A | 6 | 100% |  | 2021-03-04 05:00 | 2021-03-04 22:00 | 17h |  |  | 姜浩; 电气人员; 陆炎 | 1.5h | 1.5h |
| 9 | 2.3 | **一阶段测试（设备未上轨）** | 0.4d? | 2021-03-03 11:30 A | 2021-03-03 21:00 A | 8 | 100% |  | 2021-03-05 05:00 | 2021-03-05 22:00 | 0.71d? |  |  | 姜浩; 杨立志 | 19h | 19h |
| 10 | 2.3.1 | 行走缸/举升缸开环伸缩（不考虑死区) | 0.5h? | 2021-03-03 11:30 A | 2021-03-03 12:00 A | 8 | 100% |  | 2021-03-05 05:00 | 2021-03-05 10:00 | 5h? |  |  |  |  |  |
| 11 | 2.3.2 | 行走缸/举升缸闭环伸缩（简单PI) | 1h? | 2021-03-03 17:00 A | 2021-03-03 18:00 A | 10 | 100% |  | 2021-03-05 10:00 | 2021-03-05 12:00 | 2h? |  |  |  |  |  |
| 12 | 2.3.3 | 前后锁紧块锁销动作 | 1.5h? | 2021-03-03 18:00 A | 2021-03-03 19:30 A | 11 | 100% |  | 2021-03-05 12:00 | 2021-03-05 13:00 | 1h? |  |  |  |  |  |
| 13 | 2.3.4 | 六种单步工艺校验 | 1.5h? | 2021-03-03 19:30 A | 2021-03-03 21:00 A | 12 | 100% |  | 2021-03-05 13:00 | 2021-03-05 22:00 | 9h? |  |  |  |  |  |
| 14 | 2.4 | **二阶段测试（配合上轨装配/连接测试)** | 0.75d? | 2021-03-04 19:30 A | 2021-03-05 20:30 | 9 | 6% | 0.71d? | 2021-03-06 05:00 | 2021-03-07 22:00 | 1.42d? | 13.88d |  |  | 35h | 1h |
| 15 | 2.4.1 | 配合机械/电气装配（含锁销插入实验) | 1h? | 2021-03-04 19:30 A | 2021-03-04 20:30 A |  | 100% |  | 2021-03-06 05:00 | 2021-03-06 22:00 | 17h? |  |  | 姜浩; 陆炎 | 1h | 1h |
| 16 | 2.4.2 | 测试上轨后行走缸移动是否顺滑 | 17h? | 2021-03-04 20:30 | 2021-03-05 20:30 | 15 |  |  | 2021-03-07 05:00 | 2021-03-07 22:00 | 17h? | 13.88d |  | 姜浩; 陆炎 | 34h |  |
| 17 | 2.5 | **液压开环** | 1.98d? | 2021-03-04 08:00 A | 2021-03-06 21:30 | 7 | 11% | 1.76d? | 2021-03-08 05:00 | 2021-03-08 22:00 | 0.71d? | 0d |  | 姜浩; 陈田风 | 95h | 15.11h |
| 18 | 2.5.1 | 举升缸死区确认 | 4.5h? | 2021-03-04 08:00 A | 2021-03-04 12:30 A | 13 | 100% |  | 2021-03-08 05:00 | 2021-03-08 10:00 | 5h? |  |  |  |  |  |
| 19 | 2.5.2 | 行走缸死区确认 | 24h? | 2021-03-04 19:30 | 2021-03-06 09:30 | 18, 3 |  |  |  |  |  | 0d |  |  |  |  |
| 20 | 2.5.3 | 行走缸/举升缸最大速度确认 | 12h? | 2021-03-06 09:30 | 2021-03-06 21:30 | 19 |  |  | 2021-03-08 10:00 | 2021-03-08 22:00 | 12h? | 0d |  |  |  |  |
| 21 | 2.6 | **锁销动作** | 0.71d? | 2021-03-06 21:30 | 2021-03-07 21:30 | 17 |  |  | 2021-03-09 05:00 | 2021-03-09 22:00 | 0.71d? | 0d |  | 液压人员; 陆炎; 姜浩 | 51h |  |
| 22 | 2.6.1 | 利用开环控制手动完成一次爬行 | 17h? | 2021-03-06 21:30 | 2021-03-07 21:30 | 7 |  |  | 2021-03-09 05:00 | 2021-03-09 22:00 | 17h? | 0d |  |  |  |  |
| 23 | 2.6.2 | 确认一步和半步的孔距 | 17h? | 2021-03-06 21:30 | 2021-03-07 21:30 |  |  |  | 2021-03-09 05:00 | 2021-03-09 22:00 | 17h? | 0d |  |  |  |  |
| 24 | 2.7 | **液压闭环** | 1.42d? | 2021-03-07 21:30 | 2021-03-09 21:30 | 21 |  |  | 2021-03-10 05:00 | 2021-03-11 22:00 | 1.42d? | 0d |  | 姜浩; 杨立志; 臧含 | 102h |  |
| 25 | 2.7.1 | 行走缸闭环 | 17h? | 2021-03-07 21:30 | 2021-03-08 21:30 |  |  |  | 2021-03-10 05:00 | 2021-03-10 22:00 | 17h? | 0d |  |  |  |  |
| 26 | 2.7.2 | 举升缸闭环 | 17h | 2021-03-08 21:30 | 2021-03-09 21:30 | 25 |  |  | 2021-03-11 05:00 | 2021-03-11 22:00 | 17h | 0d |  |  |  |  |
| 27 | 2.8 | 手动/单步调试（手动操作) | 2d? | 2021-03-09 21:30 | 2021-03-12 13:30 | 24 |  |  | 2021-03-12 00:00 | 2021-03-14 00:00 | 2d? | 0d |  |  |  |  |

Notes:
- 6: 10~11 电气修改行走线性位移传感器 / 13~15 拍照 / 15~17 机械和液压整改 / 遗留压力传感器数值不正确的问题
- 20: 可能有危险，损坏元器件，可以考虑不做

| ID | WBS | Task | Duration | Start | Finish | Predecessors | Baseline start | Baseline finish | Baseline duration | Total slack | Resources | Work |
| --- | --- | --- | --- | --- | --- | --- | --- | --- | --- | --- | --- | --- |
| 28 | 2.9 | **自动任务（单步操作)** | 3d? | 2021-03-12 13:30 | 2021-03-15 13:30 | 27 | 2021-03-14 00:00 | 2021-03-17 00:00 | 3d? | 0d |  | 144h |
| 29 | 2.9.1 | 顺逆一步 | 12h? | 2021-03-12 13:30 | 2021-03-13 01:30 |  | 2021-03-14 00:00 | 2021-03-14 12:00 | 12h? | 0d | 姜浩; 陆炎 | 24h |
| 30 | 2.9.2 | 逆顺一步 | 12h? | 2021-03-13 01:30 | 2021-03-13 13:30 | 29 | 2021-03-14 12:00 | 2021-03-15 00:00 | 12h? | 0d | 杨立志; 臧含 | 24h |
| 31 | 2.9.3 | 中逆半步 | 12h? | 2021-03-13 13:30 | 2021-03-14 01:30 | 30 | 2021-03-15 00:00 | 2021-03-15 12:00 | 12h? | 0d | 姜浩; 陆炎 | 24h |
| 32 | 2.9.4 | 逆中半步 | 12h? | 2021-03-14 01:30 | 2021-03-14 13:30 | 31 | 2021-03-15 12:00 | 2021-03-16 00:00 | 12h? | 0d | 杨立志; 臧含 | 24h |
| 33 | 2.9.5 | 中顺半步 | 12h? | 2021-03-14 13:30 | 2021-03-15 01:30 | 32 | 2021-03-16 00:00 | 2021-03-16 12:00 | 12h? | 0d | 姜浩; 陆炎 | 24h |
| 34 | 2.9.6 | 顺中半步 | 12h? | 2021-03-15 01:30 | 2021-03-15 13:30 | 33 | 2021-03-16 12:00 | 2021-03-17 00:00 | 12h? | 0d | 杨立志; 臧含 | 24h |
| 35 | 2.10 | **自动复合** | 3d? | 2021-03-15 13:30 | 2021-03-18 13:30 | 28 | 2021-03-17 00:00 | 2021-03-20 00:00 | 3d? | 0d |  | 144h |
| 36 | 2.10.1 | 中逆移动 | 24h? | 2021-03-15 13:30 | 2021-03-16 13:30 | 28 | 2021-03-17 00:00 | 2021-03-18 00:00 | 24h? | 0d | 姜浩; 陆炎 | 48h |
| 37 | 2.10.2 | 逆中移动 | 12h? | 2021-03-16 13:30 | 2021-03-17 01:30 | 36 | 2021-03-18 00:00 | 2021-03-18 12:00 | 12h? | 0d | 杨立志; 臧含 | 24h |
| 38 | 2.10.3 | 中顺移动 | 24h? | 2021-03-17 01:30 | 2021-03-18 01:30 | 37 | 2021-03-18 12:00 | 2021-03-19 12:00 | 24h? | 0d | 姜浩; 陆炎 | 48h |
| 39 | 2.10.4 | 顺中移动 | 12h? | 2021-03-18 01:30 | 2021-03-18 13:30 | 38 | 2021-03-19 12:00 | 2021-03-20 00:00 | 12h? | 0d | 杨立志; 臧含 | 24h |
| 40 | 2.11 | 稳定性 | 72h | 2021-03-18 13:30 | 2021-03-21 13:30 | 35 | 2021-03-20 00:00 | 2021-03-23 00:00 | 72h | 0d | 电气人员 | 72h |
| 41 | 3 | 完善优化阶段 | 14d? | 2021-03-21 13:30 | 2021-04-04 13:30 | 4 | 2021-03-23 00:00 | 2021-04-06 00:00 | 14d? | 0d |  |  |
